# csen_poomsae_score_old

Schedule from MS Project, 2019-05-01 to 2019-11-07.

## Calendars

- Calendario PunchCode: Mon-Fri 09:00-12:00, 13:00-18:00; Sat-Sun off.

## Resources

| Resource |
| --- |
| Giacomo Frisoni |
| Marcin Pabich |

## Schedule

| ID | WBS | Task | Duration | Start | Finish | Predecessors | Total slack | Free slack | Resources | Work |
| --- | --- | --- | --- | --- | --- | --- | --- | --- | --- | --- |
| 1 | 1.1 | **Prima release** | 18d | 2019-05-01 | 2019-05-24 |  | 0d |  |  | 240h |
| 2 | 1.1.1 | Menù Principale | 2d | 2019-05-01 | 2019-05-02 |  | 0d |  | Marcin Pabich | 16h |
| 3 | 1.1.2.1 | Registrazione Accuratezza | 3d | 2019-05-09 | 2019-05-13 | 2 | 0d |  | Giacomo Frisoni; Marcin Pabich | 48h |
| 4 | 1.1.2.2 | Registrazione Presentazione | 4d | 2019-05-03 | 2019-05-08 | 2 | 3d |  | Giacomo Frisoni; Marcin Pabich | 64h |
| 5 | 1.1.2.3 | Visualizzazione Riepilogo | 2d | 2019-05-16 | 2019-05-17 | 4, 3 | 0d |  | Marcin Pabich | 16h |
| 6 | 1.1.3 | Gestione Navigazione | 3d | 2019-05-20 | 2019-05-22 | 2, 9 | 2d |  | Marcin Pabich | 24h |
| 7 | 1.1.4 | Invio Punteggio | 3d | 2019-05-22 | 2019-05-24 | 5 | 0d |  | Giacomo Frisoni; Marcin Pabich | 40h |
| 8 | 1.1.5 | Storico | 2d | 2019-05-17 | 2019-05-21 | 5 | 3d |  | Giacomo Frisoni; Marcin Pabich | 16h |
| 9 | 1.1.6 | Impostazioni | 2d | 2019-05-14 | 2019-05-15 | 2 | 2d | 0d | Marcin Pabich | 16h |
| 10 | 1.2 | **Seconda release** | 65.5d | 2019-05-27 | 2019-08-26 | 1 | 0d |  |  | 792h |
| 11 | 1.2.1 | Menù Principale | 2d | 2019-05-27 | 2019-05-28 |  | 3d | 0d | Marcin Pabich | 16h |
| 12 | 1.2.2.1 | Inserimento Anagrafica | 1d | 2019-05-29 | 2019-05-29 | 11 | 5d |  | Marcin Pabich | 8h |
| 13 | 1.2.2.2.1 | Parsing da File Excel | 8d | 2019-05-27 | 2019-06-05 |  | 0d |  | Giacomo Frisoni | 64h |
| 14 | 1.2.2.2.2 | Apertura competizione esistente | 3d | 2019-06-06 | 2019-06-10 | 12, 13 | 0d |  | Marcin Pabich; Giacomo Frisoni | 48h |
| 15 | 1.2.2.2.3 | Validazione dei dati importati | 2.5d | 2019-06-11 | 2019-06-13 | 12, 13, 14 | 0d |  | Marcin Pabich | 20h |
| 16 | 1.2.2.3 | Gestione Atleti | 4d | 2019-06-26 | 2019-08-07 | 15 | 13d |  | Giacomo Frisoni | 32h |
| 17 | 1.2.3 | Selezione Torneo | 2.5d | 2019-06-13 | 2019-06-17 | 15 | 0d |  | Giacomo Frisoni | 20h |
| 18 | 1.2.4.1.1 | Selezione Atleta | 3d | 2019-06-18 | 2019-06-21 | 17 | 0d |  | Giacomo Frisoni | 24h |
| 19 | 1.2.4.1.2.1 | Gestione Timer | 2d | 2019-06-21 | 2019-06-28 | 18 | 2.5d | 0d | Marcin Pabich | 16h |
| 20 | 1.2.4.1.2.2 | Raccolta Punteggi Giudici | 3d | 2019-06-21 | 2019-06-26 | 18, 31 | 0d |  | Giacomo Frisoni; Marcin Pabich | 48h |
| 21 | 1.2.4.1.2.3 | Raffinamento Punteggio | 1d | 2019-06-26 | 2019-06-27 | 20 | 0d |  | Marcin Pabich | 8h |
| 22 | 1.2.4.1.2.4 | Visualizzazione Risultati | 2d | 2019-07-01 | 2019-07-02 | 21 | 0d |  | Marcin Pabich | 16h |
| 23 | 1.2.4.1.2.5 | Gestione Poomsae Finali | 4d | 2019-07-03 | 2019-07-08 | 18, 19, 20, 21, 22 | 0.5d | 0d | Giacomo Frisoni | 32h |
| 24 | 1.2.4.1.3 | Gestione Ballottaggi | 5d | 2019-07-30 | 2019-08-05 | 28, 29 | 0.5d | 0d | Giacomo Frisoni | 40h |
| 25 | 1.2.4.1.4 | Gestione Ritiri ed Eliminazioni | 3d | 2019-08-07 | 2019-08-12 | 18 | 10d |  | Giacomo Frisoni | 24h |
| 26 | 1.2.4.1.5 | Gestione Azzeramenti | 2d | 2019-08-12 | 2019-08-14 | 18 | 8d |  | Giacomo Frisoni | 16h |
| 27 | 1.2.4.1.6 | Gestione Ripetizioni | 2d | 2019-07-01 | 2019-07-02 | 19 | 38.5d |  | Giacomo Frisoni | 16h |
| 28 | 1.2.4.1.7.1 | Gestione Passaggio Turno | 7d | 2019-07-09 | 2019-07-17 | 23 | 0.5d | 0d | Giacomo Frisoni | 56h |
| 29 | 1.2.4.1.7.2 | Gestione Assegnazione Medaglie | 8d | 2019-07-18 | 2019-07-29 | 28 | 0.5d | 0d | Giacomo Frisoni | 64h |
| 30 | 1.2.4.2 | Gestione Salvataggio | 8d | 2019-08-14 | 2019-08-26 | 22 | 0d |  | Giacomo Frisoni | 64h |
| 31 | 1.2.5 | Impostazioni | 6d | 2019-05-30 | 2019-06-18 | 11 | 3d |  | Giacomo Frisoni; Marcin Pabich | 48h |
| 32 | 1.2.6.1 | Monitor Poomsae | 5d | 2019-08-06 | 2019-08-12 | 24 | 0.5d | 0d | Marcin Pabich | 40h |
| 33 | 1.2.6.2.1 | Elenco Atleti | 5d | 2019-08-13 | 2019-08-19 | 32 | 0.5d | 0d | Marcin Pabich | 40h |
| 34 | 1.2.6.2.2 | Classifica Torneo | 4d | 2019-08-20 | 2019-08-23 | 33 | 0.5d |  | Marcin Pabich | 32h |

| ID | WBS | Task | Duration | Start | Finish | Predecessors | Total slack | Free slack | Resources | Work |
| --- | --- | --- | --- | --- | --- | --- | --- | --- | --- | --- |
| 35 | 1.3 | **Terza release** | 53d | 2019-08-26 | 2019-11-07 | 10 | 0d |  |  | 832h |
| 36 | 1.3.1 | Menù Principale | 2d | 2019-08-26 | 2019-08-28 |  | 0d |  | Marcin Pabich | 16h |
| 37 | 1.3.1.2.1 | Spostamento Configurazione Competizione sul Server | 4d | 2019-08-28 | 2019-09-03 | 36 | 0d |  | Giacomo Frisoni; Marcin Pabich | 64h |
| 38 | 1.3.1.2.2 | Gestione Trasferimenti | 9d | 2019-09-03 | 2019-09-16 | 37 | 0d |  | Giacomo Frisoni; Marcin Pabich | 144h |
| 39 | 1.3.1.2.3 | Partizionamento Tornei-Quadrati | 14d | 2019-09-16 | 2019-10-04 | 37, 38 | 0d |  | Giacomo Frisoni; Marcin Pabich | 224h |
| 40 | 1.3.1.3.1 | Raccolta Punteggi e Classifiche Locali | 6.5d | 2019-10-08 | 2019-10-16 | 39, 36 | 2d | 0d | Giacomo Frisoni; Marcin Pabich | 80h |
| 41 | 1.3.1.3.2 | Gestione Classifica Globale | 2d | 2019-10-17 | 2019-10-21 | 40 | 11d | 0d | Giacomo Frisoni | 16h |
| 42 | 1.3.1.4 | Gestione Salvataggio | 4d | 2019-10-30 | 2019-11-05 | 38, 40 | 2d |  | Giacomo Frisoni | 32h |
| 43 | 1.3.1.5 | Impostazioni | 6d | 2019-10-21 | 2019-10-29 | 36 | 7d |  | Giacomo Frisoni; Marcin Pabich | 64h |
| 44 | 1.3.1.6.1 | Legame Atleta-Quadrato | 4d | 2019-11-01 | 2019-11-07 | 39 | 0d |  | Marcin Pabich | 32h |
| 45 | 1.3.1.6.2 | Classifica Globale | 2d | 2019-10-21 | 2019-10-23 | 41 | 11d |  | Marcin Pabich | 16h |
| 46 | 1.3.2.1.1 | Rimozione Feature Coperte dal Server | 5.5d | 2019-08-26 | 2019-10-09 |  | 5d | 0d | Giacomo Frisoni; Marcin Pabich | 64h |
| 47 | 1.3.2.1.2 | Ricezione Tornei | 3.5d | 2019-10-15 | 2019-10-18 | 46 | 5d | 0d | Giacomo Frisoni; Marcin Pabich | 32h |
| 48 | 1.3.2.1.3 | Invio Risultati al Server | 5d | 2019-10-25 | 2019-11-01 | 47 | 4d |  | Giacomo Frisoni; Marcin Pabich | 48h |
