# csen_poomsae_score_new

Schedule from MS Project, 2019-05-01 to 2019-12-03.

## Calendars

- Calendario PunchCode: Mon-Fri 09:00-12:00, 13:00-18:00; Sat-Sun off.

## Resources

| Resource |
| --- |
| Giacomo Frisoni |
| Marcin Pabich |

## Schedule

| ID | WBS | Task | Duration | Start | Finish | Predecessors | Total slack | Free slack | Resources | Work |
| --- | --- | --- | --- | --- | --- | --- | --- | --- | --- | --- |
| 1 | 1.1 | **Prima release** | 16d | 2019-05-01 | 2019-05-22 |  | 0d |  |  | 240h |
| 2 | 1.1.1 | Menù Principale | 2d | 2019-05-01 | 2019-05-02 |  | 0d |  | Marcin Pabich | 16h |
| 3 | 1.1.2.1 | Registrazione Accuratezza | 3d | 2019-05-03 | 2019-05-07 | 2 | 3d |  | Giacomo Frisoni; Marcin Pabich | 48h |
| 4 | 1.1.2.2 | Registrazione Presentazione | 3d | 2019-05-08 | 2019-05-10 | 2 | 0d |  | Giacomo Frisoni; Marcin Pabich | 48h |
| 5 | 1.1.2.3 | Visualizzazione Riepilogo | 2d | 2019-05-13 | 2019-05-14 | 4, 3 | 0d |  | Marcin Pabich | 16h |
| 6 | 1.1.3 | Gestione Navigazione | 3d | 2019-05-15 | 2019-05-17 | 2, 9 | 3d |  | Marcin Pabich | 24h |
| 7 | 1.1.4 | Invio Punteggio | 6d | 2019-05-15 | 2019-05-22 | 5 | 0d |  | Giacomo Frisoni; Marcin Pabich | 48h |
| 8 | 1.1.5 | Storico | 3d | 2019-05-20 | 2019-05-22 | 5 | 0d |  | Giacomo Frisoni | 24h |
| 9 | 1.1.6 | Impostazioni | 2d | 2019-05-13 | 2019-05-14 | 2 | 3d | 0d | Giacomo Frisoni | 16h |
| 10 | 1.1.7 | Collaudo | 1d | 2019-05-23 | 2019-05-23 | 1 | 0d |  | Giacomo Frisoni; Marcin Pabich | 16h |
| 11 | 1.2 | **Seconda release** | 58.5d | 2019-05-24 | 2019-08-14 | 10 | 0d |  |  | 928h |
| 12 | 1.2.1 | Menù Principale | 2d | 2019-05-24 | 2019-05-27 |  | 5d | 0d | Marcin Pabich | 16h |
| 13 | 1.2.2.1 | Inserimento Anagrafica | 1d | 2019-05-28 | 2019-05-28 | 12 | 5d |  | Marcin Pabich | 8h |
| 14 | 1.2.2.2.1 | Parsing da File Excel | 8d | 2019-05-24 | 2019-06-04 |  | 0d |  | Giacomo Frisoni | 64h |
| 15 | 1.2.2.2.2 | Apertura competizione esistente | 3d | 2019-06-05 | 2019-06-07 | 13, 14 | 0d |  | Marcin Pabich; Giacomo Frisoni | 48h |
| 16 | 1.2.2.2.3 | Validazione dei dati importati | 2.5d | 2019-06-10 | 2019-06-12 | 13, 14, 15 | 14d | 0d | Marcin Pabich | 20h |
| 17 | 1.2.2.3 | Gestione Atleti | 4d | 2019-07-19 | 2019-07-25 | 16 | 14d |  | Marcin Pabich | 32h |
| 18 | 1.2.3 | Selezione Torneo | 2.5d | 2019-06-10 | 2019-06-12 | 15 | 0d |  | Giacomo Frisoni | 20h |
| 19 | 1.2.4.1.1 | Selezione Atleta | 3d | 2019-06-12 | 2019-06-17 | 18 | 0d |  | Giacomo Frisoni; Marcin Pabich | 48h |
| 20 | 1.2.4.1.2.1 | Gestione Timer | 2d | 2019-06-21 | 2019-06-25 | 19 | 2d | 0d | Marcin Pabich | 16h |
| 21 | 1.2.4.1.2.2 | Raccolta Punteggi Giudici | 3d | 2019-06-17 | 2019-06-20 | 19, 32 | 0d |  | Giacomo Frisoni; Marcin Pabich | 48h |
| 22 | 1.2.4.1.2.3 | Raffinamento Punteggio | 1d | 2019-06-20 | 2019-06-21 | 21 | 0d |  | Marcin Pabich | 8h |
| 23 | 1.2.4.1.2.4 | Visualizzazione Risultati | 2d | 2019-06-25 | 2019-06-27 | 22 | 0d |  | Marcin Pabich | 16h |
| 24 | 1.2.4.1.2.5 | Gestione Poomsae Finali | 3d | 2019-06-27 | 2019-07-02 | 19, 20, 21, 22, 23 | 0d |  | Giacomo Frisoni; Marcin Pabich | 48h |
| 25 | 1.2.4.1.3 | Gestione Ballottaggi | 5d | 2019-07-19 | 2019-07-26 | 29, 30 | 0d |  | Giacomo Frisoni | 40h |
| 26 | 1.2.4.1.4 | Gestione Ritiri ed Eliminazioni | 3d | 2019-06-20 | 2019-06-25 | 19 | 36d |  | Giacomo Frisoni | 24h |
| 27 | 1.2.4.1.5 | Gestione Azzeramenti | 2d | 2019-07-26 | 2019-07-30 | 19 | 11d |  | Giacomo Frisoni | 16h |
| 28 | 1.2.4.1.6 | Gestione Ripetizioni | 2d | 2019-06-25 | 2019-06-27 | 20 | 34d |  | Giacomo Frisoni | 16h |
| 29 | 1.2.4.1.7.1 | Gestione Passaggio Turno | 6d | 2019-07-02 | 2019-07-10 | 24 | 0d |  | Giacomo Frisoni; Marcin Pabich | 96h |
| 30 | 1.2.4.1.7.2 | Gestione Assegnazione Medaglie | 7d | 2019-07-10 | 2019-07-19 | 29 | 0d |  | Giacomo Frisoni; Marcin Pabich | 112h |
| 31 | 1.2.4.2 | Gestione Salvataggio | 8d | 2019-07-30 | 2019-08-09 | 23 | 3d |  | Giacomo Frisoni | 64h |
| 32 | 1.2.5 | Impostazioni | 5d | 2019-05-29 | 2019-06-04 | 12 | 8.5d |  | Marcin Pabich | 40h |
| 33 | 1.2.6.1 | Monitor Poomsae | 5d | 2019-07-26 | 2019-08-02 | 25 | 0d |  | Marcin Pabich | 40h |
| 34 | 1.2.6.2.1 | Elenco Atleti | 5d | 2019-08-02 | 2019-08-09 | 33 | 0d |  | Marcin Pabich | 40h |
| 35 | 1.2.6.2.2 | Classifica Torneo | 3d | 2019-08-09 | 2019-08-14 | 34 | 0d |  | Marcin Pabich; Giacomo Frisoni | 48h |
| 36 | 1.2.7 | Collaudo | 3d | 2019-08-14 | 2019-08-19 | 11 | 0d |  | Giacomo Frisoni; Marcin Pabich | 48h |

| ID | WBS | Task | Duration | Start | Finish | Predecessors | Total slack | Free slack | Resources | Work |
| --- | --- | --- | --- | --- | --- | --- | --- | --- | --- | --- |
| 37 | 1.3 | **Terza release** | 53d | 2019-08-19 | 2019-10-31 | 36 | 0d |  |  | 832h |
| 38 | 1.3.1 | Menù Principale | 2d | 2019-08-19 | 2019-08-21 |  | 0d |  | Marcin Pabich | 16h |
| 39 | 1.3.1.2.1 | Spostamento Configurazione Competizione sul Server | 4d | 2019-08-21 | 2019-08-27 | 38 | 0d |  | Giacomo Frisoni; Marcin Pabich | 64h |
| 40 | 1.3.1.2.2 | Gestione Trasferimenti | 11d | 2019-10-16 | 2019-10-31 | 39, 44 | 0d |  | Giacomo Frisoni; Marcin Pabich | 144h |
| 41 | 1.3.1.2.3 | Partizionamento Tornei-Quadrati | 14d | 2019-09-06 | 2019-09-26 | 39, 45, 48 | 0d |  | Giacomo Frisoni; Marcin Pabich | 224h |
| 42 | 1.3.1.3.1 | Raccolta Punteggi e Classifiche Locali | 5d | 2019-10-03 | 2019-10-10 | 41, 50 | 0d |  | Giacomo Frisoni; Marcin Pabich | 80h |
| 43 | 1.3.1.3.2 | Gestione Classifica Globale | 2d | 2019-10-16 | 2019-10-18 | 42 | 7d | 0d | Giacomo Frisoni | 16h |
| 44 | 1.3.1.4 | Gestione Salvataggio | 4d | 2019-10-10 | 2019-10-16 | 42 | 0d |  | Giacomo Frisoni | 32h |
| 45 | 1.3.1.5 | Impostazioni | 4d | 2019-09-02 | 2019-09-06 | 38, 48 | 0d |  | Giacomo Frisoni; Marcin Pabich | 64h |
| 46 | 1.3.1.6.1 | Legame Atleta-Quadrato | 4d | 2019-10-10 | 2019-10-16 | 41 | 11d |  | Marcin Pabich | 32h |
| 47 | 1.3.1.6.2 | Classifica Globale | 2d | 2019-10-18 | 2019-10-22 | 43 | 7d |  | Marcin Pabich | 16h |
| 48 | 1.3.2.1.1 | Rimozione Feature Coperte dal Server | 4d | 2019-08-27 | 2019-09-02 | 39 | 0d |  | Giacomo Frisoni; Marcin Pabich | 64h |
| 49 | 1.3.2.1.2 | Ricezione Tornei | 2d | 2019-09-26 | 2019-09-30 | 48, 41 | 0d |  | Giacomo Frisoni; Marcin Pabich | 32h |
| 50 | 1.3.2.1.3 | Invio Risultati al Server | 3d | 2019-09-30 | 2019-10-03 | 49 | 0d |  | Giacomo Frisoni; Marcin Pabich | 48h |
| 51 | 1.3.3 | Collaudo | 3d | 2019-10-31 | 2019-11-05 | 37 | 0d |  | Giacomo Frisoni; Marcin Pabich | 48h |
| 52 | N.D. | Scope Bank | 20d | 2019-11-05 | 2019-12-03 | 51 | 0d |  |  |  |
